# uvis

Schedule from MS Project, 2022-02-07 to 2023-04-13, costs in ₽.

## Calendars

- Стандартный: Mon-Fri 09:00-13:00, 14:00-18:00; Sat-Sun off.

## Resources

| Resource |
| --- |
| Стоимость лицензий SAP |
| Закупка нового оборудования |
| Стоимость поддержки от SAP |
| Руководитель проекта |
| Эксперт |
| Архитектор |
| Ведущий консультант |
| Тим лид |
| Ведущий разработчик |
| Старший консультант |
| Старший разработчик |
| Консультант SAP HCM |
| Разработчик |
| Младший консультант |
| Разработчик Джун |

## Schedule

| ID | WBS | Task | Duration | Start | Finish | Predecessors | Total slack | Free slack | Constraint | Resources | Work | Cost |
| --- | --- | --- | --- | --- | --- | --- | --- | --- | --- | --- | --- | --- |
| 1 | 1 | **Подготовка проекта** | 23d? | 2022-02-07 | 2022-03-09 |  | 0d |  |  |  | 776h | 3,092,000 |
| 2 | 1.1 | **Запуск фазы** | 8d | 2022-02-07 | 2022-02-16 |  | 0d |  |  |  | 80h | 360,000 |
| 3 | 1.1.1 | Определить структуру проекта, ролей и сфер ответственности | 1d | 2022-02-07 | 2022-02-07 |  | 0d |  | start no earlier than 2022-02-07 | Руководитель проекта; Ведущий консультант; Ведущий разработчик | 24h | 108,000 |
| 4 | 1.1.2 | Присвоить ресусры и роли | 1d | 2022-02-08 | 2022-02-08 | 3 | 0d |  |  | Руководитель проекта | 8h | 36,000 |
| 5 | 1.1.3 | Настроить логистику и инфраструктуру проекта | 2d | 2022-02-09 | 2022-02-10 | 4 | 0d |  |  | Руководитель проекта | 16h | 72,000 |
| 6 | 1.1.4 | Набрать проектную группу | 3d | 2022-02-11 | 2022-02-15 | 5 | 0d |  |  | Руководитель проекта | 24h | 108,000 |
| 7 | 1.1.5 | Провести совещание по запуску | 1d | 2022-02-16 | 2022-02-16 | 6 | 0d |  |  | Руководитель проекта | 8h | 36,000 |
| 8 | 1.2 | Определить полный список стейкхолдеров | 1d? | 2022-02-17 | 2022-02-17 | 2 | 14d |  |  | Тим лид; Архитектор | 16h | 79,000 |
| 9 | 1.3 | **Инициация проекта** | 6d | 2022-02-17 | 2022-02-24 |  | 0d |  |  |  | 104h | 481,000 |
| 10 | 1.3.1 | Подготовить бизнес-основания проекта | 1d | 2022-02-17 | 2022-02-17 | 7 | 0d |  |  | Старший консультант; Ведущий консультант | 16h | 64,000 |
| 11 | 1.3.2 | Составить и утвердить устав проекта | 3d | 2022-02-21 | 2022-02-23 | 12 | 0d |  |  | Архитектор; Ведущий консультант; Ведущий разработчик | 72h | 345,000 |
| 12 | 1.3.3 | Обозначить объем проекта | 1d | 2022-02-18 | 2022-02-18 | 10 | 0d |  |  | Ведущий консультант | 8h | 36,000 |
| 13 | 1.3.4 | Составить график планирования объекта | 1d | 2022-02-24 | 2022-02-24 | 11 | 5d | 0d |  | Тим лид | 8h | 36,000 |
| 14 | 1.4 | Составить и утвердить устав/регламент управления изменениями | 1d | 2022-02-24 | 2022-02-24 | 11 | 0d |  |  | Руководитель проекта | 8h | 36,000 |
| 15 | 1.5 | Составить маршрутную карту управления изменениями | 1d | 2022-02-25 | 2022-02-25 | 14 | 8d |  |  | Старший консультант; Старший разработчик | 16h | 56,000 |
| 16 | 1.6 | Организация рабочей группы | 2d | 2022-02-17 | 2022-02-18 | 7 | 13d |  |  | Руководитель проекта | 16h | 72,000 |
| 17 | 1.7 | Составить стратегию обучения команды проекта | 3d | 2022-02-17 | 2022-02-21 | 7 | 12d |  |  | Эксперт; Консультант SAP HCM; Младший консультант | 72h | 243,000 |
| 18 | 1.8 | Составить стратегию обучения конечных пользователей | 3d | 2022-02-25 | 2022-03-01 | 13 | 6d |  |  | Консультант SAP HCM | 24h | 66,000 |
| 19 | 1.9 | **Определение плана руководства проектом** | 1d | 2022-02-25 | 2022-02-25 |  | 0d |  |  | Руководитель проекта; Ведущий консультант | 16h | 72,000 |
| 20 | 1.9.1 | Сформировать процедуру интегрированного контроля изменений | 1d | 2022-02-25 | 2022-02-25 | 14 | 0d |  |  |  |  |  |
| 21 | 1.9.2 | Сформировать процедуру управления проблемами | 1d | 2022-02-25 | 2022-02-25 | 14 | 0d |  |  |  |  |  |
| 22 | 1.9.3 | Составить план управления объемом | 1d | 2022-02-25 | 2022-02-25 | 14 | 0d |  |  |  |  |  |
| 23 | 1.9.4 | Составить план управления качеством | 1d | 2022-02-25 | 2022-02-25 | 14 | 0d |  |  |  |  |  |
| 24 | 1.9.5 | Составить план управления коммуникациями | 1d | 2022-02-25 | 2022-02-25 | 14 | 0d |  |  |  |  |  |
| 25 | 1.9.6 | Составить план управления рисками | 1d | 2022-02-25 | 2022-02-25 | 14 | 0d |  |  |  |  |  |

| ID | WBS | Task | Duration | Start | Finish | Predecessors | Total slack | Free slack | Resources | Work | Cost |
| --- | --- | --- | --- | --- | --- | --- | --- | --- | --- | --- | --- |
| 26 | 1.10 | **Обозначить стандарты проекта** | 2d | 2022-02-28 | 2022-03-01 |  | 0d |  | Руководитель проекта; Эксперт; Ведущий разработчик; Архитектор | 64h | 316,000 |
| 27 | 1.10.1 | Обозначить стандарты моделирования бизнес-процессов | 2d | 2022-02-28 | 2022-03-01 | 19 | 0d |  |  |  |  |
| 28 | 1.10.2 | Обозначить стандарты управления начальной разработкой | 2d | 2022-02-28 | 2022-03-01 | 19 | 0d |  |  |  |  |
| 29 | 1.10.3 | Составить план развертывания архитектуры | 2d | 2022-02-28 | 2022-03-01 | 19 | 0d |  |  |  |  |
| 30 | 1.10.4 | Обозначить стандарты управления запросами на изменения | 2d | 2022-02-28 | 2022-03-01 | 19 | 0d |  |  |  |  |
| 31 | 1.10.5 | Обозначить стандарты управления тестированием | 2d | 2022-02-28 | 2022-03-01 | 19 | 0d |  |  |  |  |
| 32 | 1.10.6 | Обозначить стандарты сервсиного обслуживания | 2d | 2022-02-28 | 2022-03-01 | 19 | 0d |  |  |  |  |
| 33 | 1.10.7 | Обозначить стандарт проектрования и разработки | 2d | 2022-02-28 | 2022-03-01 | 19 | 0d |  |  |  |  |
| 34 | 1.11 | Составить отчёт с описанием методов тестирования и шагами маршрутной карты тестирования | 2d | 2022-02-25 | 2022-02-28 | 13 | 7d |  | Разработчик Джун | 16h | 32,000 |
| 35 | 1.12 | Спроектировать бизнес-сценарии | 2d | 2022-02-25 | 2022-02-28 | 13 | 7d |  | Младший консультант | 16h | 32,000 |
| 36 | 1.13 | Составить и утвердить карту бизнес-процессов верхнего уровня | 2d | 2022-02-25 | 2022-02-28 | 13 | 5d | 0d | Ведущий консультант | 16h | 72,000 |
| 37 | 1.14 | Составить черновой вариант описания процессов с доработкой на этапе КП | 2d | 2022-03-01 | 2022-03-02 | 36 | 5d |  | Ведущий консультант | 16h | 72,000 |
| 38 | 1.15 | Собрать информацию для подготовки концепции миграции | 2d | 2022-03-02 | 2022-03-03 | 26 | 0d |  | Ведущий разработчик; Младший консультант | 32h | 104,000 |
| 39 | 1.16 | Составить отчёт о миграции данных | 1d | 2022-03-04 | 2022-03-04 | 38 | 2d | 0d | Младший консультант; Разработчик Джун | 16h | 32,000 |
| 40 | 1.17 | Проинформировать клиента о сложности процесса миграции данных | 1d | 2022-03-07 | 2022-03-07 | 39 | 2d |  | Тим лид | 8h | 36,000 |
| 41 | 1.18 | Составить и утвердить отчёт аудита данных | 1d | 2022-03-07 | 2022-03-07 | 39 | 2d |  | Ведущий консультант; Старший консультант | 16h | 64,000 |
| 42 | 1.19 | Сформулировать методы миграции | 2d | 2022-03-04 | 2022-03-07 | 38 | 0d |  | Ведущий разработчик | 16h | 72,000 |
| 43 | 1.20 | Установить взаимосвязь с существующими системами | 2d | 2022-03-02 | 2022-03-03 | 26 | 1d | 0d | Старший разработчик; Старший консультант | 32h | 112,000 |
| 44 | 1.21 | Выявить ресурсы клиента | 1d | 2022-02-25 | 2022-02-25 | 9 | 8d |  | Тим лид; Эксперт | 16h | 79,000 |
| 45 | 1.22 | Составить документ требований и объема миграции | 2d | 2022-03-08 | 2022-03-09 | 42 | 0d |  | Старший консультант; Старший разработчик | 32h | 112,000 |
| 46 | 1.23 | Составить и утвердить список интерфейсов | 3d | 2022-03-04 | 2022-03-08 | 43 | 1d |  | Ведущий консультант; Старший разработчик | 48h | 192,000 |
| 47 | 1.24 | Составить и утвердить план развертывания решения | 2d | 2022-03-02 | 2022-03-03 | 26 | 4d |  | Тим лид | 16h | 72,000 |
| 48 | 1.25 | Сформулировать предложения по конфигурированию программного обеспечения | 2d | 2022-03-02 | 2022-03-03 | 26 | 4d |  | Старший разработчик; Руководитель проекта | 32h | 128,000 |
| 49 | 1.26 | Установить среду проектной группы | 2d | 2022-03-02 | 2022-03-03 | 26 | 4d |  | Старший консультант | 16h | 56,000 |
| 50 | 1.27 | Провести развертывание SAP SM | 2d | 2022-03-02 | 2022-03-03 | 26 | 4d |  | Консультант SAP HCM | 16h | 44,000 |

| ID | WBS | Task | Duration | Start | Finish | Predecessors | Total slack | Free slack | Resources | Work | Cost |
| --- | --- | --- | --- | --- | --- | --- | --- | --- | --- | --- | --- |
| 51 | 2 | **Концептуальный проект** | 41d | 2022-03-10 | 2022-05-05 |  | 0d |  |  | 2032h | 7,928,000 |
| 52 | 2.1 | **Запуск фазы** | 5d | 2022-03-10 | 2022-03-16 |  | 36d |  |  | 56h | 252,000 |
| 53 | 2.1.1 | Присвоить ресурсы фазы | 2d | 2022-03-10 | 2022-03-11 | 1 | 36d | 0d | Тим лид | 16h | 72,000 |
| 54 | 2.1.2 | Составить подробный план график фазы | 2d | 2022-03-14 | 2022-03-15 | 53 | 36d | 0d | Руководитель проекта; Тим лид | 32h | 144,000 |
| 55 | 2.1.3 | Провести совещание по запуску фазы | 1d | 2022-03-16 | 2022-03-16 | 54 | 36d |  | Руководитель проекта | 8h | 36,000 |
| 56 | 2.2 | **Провести анализ стейкхолдеров** | 6d | 2022-03-10 | 2022-03-17 |  | 13d | 0d |  | 48h | 216,000 |
| 57 | 2.2.1 | Провести классификацию стейколдеров | 3d | 2022-03-10 | 2022-03-14 | 1 | 13d | 0d | Ведущий консультант | 24h | 108,000 |
| 58 | 2.2.2 | Провести анализ отношений стейкхолдеров | 3d | 2022-03-15 | 2022-03-17 | 57 | 13d | 0d | Ведущий консультант | 24h | 108,000 |
| 59 | 2.3 | **Провести анализ влияния изменений** | 8d | 2022-03-10 | 2022-03-21 |  | 0d |  |  | 144h | 496,000 |
| 60 | 2.3.1 | Описать влияния изменений для всех стейкхолдеров групп | 2d | 2022-03-18 | 2022-03-21 | 58 | 33d |  | Ведущий консультант | 16h | 72,000 |
| 61 | 2.3.2 | Составить рекомендации по важным оперциям по управлению изменениями | 3d | 2022-03-10 | 2022-03-14 | 1 | 0d |  | Ведущий консультант; Старший консультант | 48h | 192,000 |
| 62 | 2.3.3 | Собрать материал для анализа потребностей в обучении | 4d | 2022-03-15 | 2022-03-18 | 61 | 0d |  | Консультант SAP HCM; Старший разработчик | 64h | 200,000 |
| 63 | 2.3.4 | Собрать материал для обоснования ценности изменений | 2d | 2022-03-15 | 2022-03-16 | 61 | 36d |  | Младший консультант | 16h | 32,000 |
| 64 | 2.4 | **Составить общий план внутренней и внешней коммуникации по проекту** | 14d | 2022-03-10 | 2022-03-29 |  | 7d |  |  | 272h | 1,110,000 |
| 65 | 2.4.1 | Согласовать размеры сбережений | 5d | 2022-03-10 | 2022-03-16 | 1 | 32d | 0d | Старший консультант | 40h | 140,000 |
| 66 | 2.4.2 | Составить техническое задание | 6d | 2022-03-21 | 2022-03-28 | 62 | 0d |  | Ведущий консультант; Ведущий разработчик; Консультант SAP HCM; Эксперт | 192h | 822,000 |
| 67 | 2.4.3 | Составить отчёт о текущем уровне сбережений | 4d | 2022-03-17 | 2022-03-22 | 65 | 32d |  | Старший консультант | 32h | 112,000 |
| 68 | 2.4.4 | Презентовать результаты | 1d | 2022-03-29 | 2022-03-29 | 66 | 27d |  | Тим лид | 8h | 36,000 |
| 69 | 2.5 | Составить список аргументов обоснования стоимости ориентированный на стейкхолдеров | 3d | 2022-03-17 | 2022-03-21 | 65 | 33d |  | Старший консультант | 24h | 84,000 |
| 70 | 2.6 | **Провести моделирование бизнес-процессов** | 15d | 2022-03-10 | 2022-03-30 |  | 26d |  |  | 208h | 902,000 |
| 71 | 2.6.1 | Составить орг. структуру бизнеса | 4d | 2022-03-10 | 2022-03-15 | 1 | 26d | 0d | Архитектор | 32h | 172,000 |
| 72 | 2.6.2 | Составить и утвердить карту бизнес-процессов | 4d | 2022-03-16 | 2022-03-21 | 71 | 26d | 0d | Архитектор; Эксперт | 64h | 344,000 |
| 73 | 2.6.3 | Составить модели и описание бизнес-процессов | 3d | 2022-03-22 | 2022-03-24 | 72 | 26d | 0d | Архитектор; Эксперт | 48h | 258,000 |
| 74 | 2.6.4 | Собрать материал по ролям и полномочиям для формирования КРиП | 4d | 2022-03-22 | 2022-03-25 | 72 | 29d |  | Младший консультант | 32h | 64,000 |
| 75 | 2.6.5 | Создать и утвердить логическую модель данных | 4d | 2022-03-25 | 2022-03-30 | 73 | 26d |  | Разработчик Джун | 32h | 64,000 |

| ID | WBS | Task | Duration | Start | Finish | Predecessors | Total slack | Free slack | Resources | Work | Cost |
| --- | --- | --- | --- | --- | --- | --- | --- | --- | --- | --- | --- |
| 76 | 2.7 | **Создать концептуальный проект** | 14d | 2022-03-15 | 2022-04-01 |  | 24d |  |  | 160h | 656,000 |
| 77 | 2.7.1 | Зафиксировать бизнес-требования | 4d | 2022-03-15 | 2022-03-18 | 61 | 34d |  | Ведущий консультант | 32h | 144,000 |
| 78 | 2.7.2 | Описать методы и инстурменты достижения запланированных результатов | 4d | 2022-03-29 | 2022-04-01 | 66 | 24d |  | Ведущий консультант; Ведущий разработчик | 64h | 288,000 |
| 79 | 2.7.3 | Сформировать окончательный проект и карту будущих бизнес-процессов с описанием | 4d | 2022-03-25 | 2022-03-30 | 73 | 26d |  | Старший консультант; Старший разработчик | 64h | 224,000 |
| 80 | 2.8 | **Провести анализ потребностей в обучении** | 16d | 2022-03-18 | 2022-04-08 |  | 0d |  |  | 136h | 452,000 |
| 81 | 2.8.1 | Составить рекомендации по необходимому объему обучения | 5d | 2022-03-29 | 2022-04-04 | 66 | 0d |  | Старший консультант; Старший разработчик | 80h | 280,000 |
| 82 | 2.8.2 | Информировать стейкхолдеров о влиянии на их сферу | 3d | 2022-03-18 | 2022-03-22 | 56 | 13d |  | Тим лид | 24h | 108,000 |
| 83 | 2.8.3 | Собрать информацию для возможности планирования семинаров для каждой роли из расположения | 4d | 2022-04-05 | 2022-04-08 | 81 | 0d |  | Младший консультант | 32h | 64,000 |
| 84 | 2.9 | **Составить стратегию обучения и развертывания** | 13d | 2022-04-11 | 2022-04-27 |  | 0d |  |  | 208h | 760,000 |
| 85 | 2.9.1 | Провести обзор типовых возможностей обучения | 4d | 2022-04-11 | 2022-04-14 | 80 | 0d |  | Ведущий разработчик; Старший консультант; Старший разработчик | 96h | 368,000 |
| 86 | 2.9.2 | Составить муршрутную карту мероприятий обучения синхронизированную с планом развертывания инфраструктуры | 5d | 2022-04-15 | 2022-04-21 | 85 | 0d |  | Старший консультант; Старший разработчик | 80h | 280,000 |
| 87 | 2.9.3 | Оценить затраты по предположенным инициативам | 4d | 2022-04-22 | 2022-04-27 | 86 | 6d |  | Старший консультант | 32h | 112,000 |
| 88 | 2.10 | Составить детальный план проведения обучения согласованный с планом проекта | 6d | 2022-04-22 | 2022-04-29 | 86 | 0d |  | Старший консультант | 48h | 168,000 |
| 89 | 2.11 | Составить список курсов для дальнейшей разработки и настройки | 3d | 2022-05-02 | 2022-05-04 | 88 | 0d |  | Разработчик Джун; Старший консультант | 48h | 132,000 |
| 90 | 2.12 | Составить документ включающий себя стратегии и принципы тестирования | 3d | 2022-03-29 | 2022-03-31 | 66 | 21d | 0d | Младший консультант | 24h | 48,000 |
| 91 | 2.13 | Составить и утвердить план тестирования | 4d | 2022-04-01 | 2022-04-06 | 90 | 21d |  | Ведущий консультант; Ведущий разработчик | 64h | 288,000 |
| 92 | 2.14 | Создать базовую технологическую платформу | 5d | 2022-03-29 | 2022-04-04 | 66 | 23d |  | Разработчик Джун | 40h | 80,000 |
| 93 | 2.15 | Создать инфраструктуру данных | 5d | 2022-03-10 | 2022-03-16 | 1 | 28d | 0d | Ведущий разработчик | 40h | 180,000 |
| 94 | 2.16 | Оценить качество данных | 3d | 2022-03-17 | 2022-03-21 | 93 | 28d | 0d | Разработчик Джун | 24h | 48,000 |
| 95 | 2.17 | Составить и утвердить методологию миграции | 5d | 2022-03-22 | 2022-03-28 | 94 | 28d |  | Старший разработчик | 40h | 140,000 |
| 96 | 2.18 | Назначить и утвердить роли и зоны ответсвенности ресурсов | 2d | 2022-03-22 | 2022-03-23 | 94 | 31d |  | Ведущий консультант | 16h | 72,000 |
| 97 | 2.19 | Составить и утвердить технический проект | 6d | 2022-03-29 | 2022-04-05 | 66 | 8d | 0d | Руководитель проекта | 48h | 216,000 |
| 98 | 2.20 | Составить и утвердить концепцию интеграции | 6d | 2022-04-06 | 2022-04-13 | 97 | 16d |  | Разработчик Джун | 48h | 96,000 |
| 99 | 2.21 | Составить и утвердить требования к полномочиям и их проектированию | 3d | 2022-04-06 | 2022-04-08 | 97 | 19d |  | Руководитель проекта | 24h | 108,000 |
| 100 | 2.22 | Качественно настроить среду разработки | 5d | 2022-04-06 | 2022-04-12 | 97 | 8d | 0d | Ведущий разработчик | 40h | 180,000 |
| 101 | 2.23 | Описать и утвердить концепцию поддержки пользователей | 4d | 2022-04-13 | 2022-04-18 | 100 | 9d | 0d | Старший консультант; Старший разработчик; Эксперт | 96h | 396,000 |
| 102 | 2.24 | Описать и утвердить концепцию управления изменениями | 4d | 2022-04-19 | 2022-04-22 | 101 | 9d |  | Эксперт; Ведущий консультант | 64h | 316,000 |
| 103 | 2.25 | Описать и утвердить концепцию управления приложениями | 4d | 2022-04-13 | 2022-04-18 | 100 | 8d | 0d | Ведущий разработчик; Эксперт | 64h | 316,000 |
| 104 | 2.26 | Описать и утвердить концепцию технической эксплуатации | 5d | 2022-04-19 | 2022-04-25 | 103 | 8d |  | Ведущий разработчик | 40h | 180,000 |
| 105 | 2.27 | Обновление плана руководством проекта | 1d | 2022-05-05 | 2022-05-05 | 89 | 0d |  | Тим лид | 8h | 36,000 |

| ID | WBS | Task | Duration | Start | Finish | Predecessors | Total slack | Free slack | Resources | Work | Cost |
| --- | --- | --- | --- | --- | --- | --- | --- | --- | --- | --- | --- |
| 106 | 3 | **Реализация** | 101d | 2022-05-06 | 2022-09-23 |  | 0d |  | Стоимость лицензий SAP | 5920h | 139,362,000 |
| 107 | 3.1 | **Запуск фазы** | 7d | 2022-05-06 | 2022-05-16 |  | 75d |  |  | 56h | 252,000 |
| 108 | 3.1.1 | Присвоить ресурсы фазы | 3d | 2022-05-06 | 2022-05-10 | 51 | 75d | 0d | Тим лид | 24h | 108,000 |
| 109 | 3.1.2 | Составить подробный план график фазы | 2d | 2022-05-11 | 2022-05-12 | 108 | 75d | 0d | Ведущий консультант | 16h | 72,000 |
| 110 | 3.1.3 | Провести совещание по запуску фазы | 2d | 2022-05-13 | 2022-05-16 | 109 | 75d | 0d | Руководитель проекта | 16h | 72,000 |
| 111 | 3.2 | Мэппинг ролей | 6d | 2022-05-17 | 2022-05-24 | 110 | 75d | 0d | Руководитель проекта | 48h | 216,000 |
| 112 | 3.3 | Определить средства коммуникаций | 5d | 2022-05-25 | 2022-05-31 | 111 | 83d |  | Тим лид | 40h | 180,000 |
| 113 | 3.4 | **Поставновка процесса сбора отзывов** | 13d | 2022-05-25 | 2022-06-10 |  | 75d |  |  | 120h | 452,000 |
| 114 | 3.4.1 | Провести семинары по обратной связи | 7d | 2022-05-25 | 2022-06-02 | 111 | 75d | 0d | Ведущий консультант | 56h | 252,000 |
| 115 | 3.4.2 | Обновить план коммуникаций | 6d | 2022-06-03 | 2022-06-10 | 114 | 75d |  | Старший консультант | 48h | 168,000 |
| 116 | 3.4.3 | Обновить план управления стейкхолдерами | 2d | 2022-06-03 | 2022-06-06 | 114 | 79d |  | Младший консультант | 16h | 32,000 |
| 117 | 3.5 | Сконфигурировать общие настройки и орг.структуру | 14d | 2022-05-06 | 2022-05-25 | 51 | 8d | 0d | Архитектор; Ведущий разработчик | 224h | 1,106,000 |
| 118 | 3.6 | Сконфигурировтаь объекты основных данных | 14d | 2022-05-06 | 2022-05-25 | 51 | 87d |  | Ведущий консультант | 112h | 504,000 |
| 119 | 3.7 | Задокументировать конфигурацию | 10d | 2022-05-06 | 2022-05-19 | 51 | 91d |  | Старший консультант; Старший разработчик | 160h | 560,000 |
| 120 | 3.8 | Обновить контрольные процедуры и сценарии тестирования | 15d | 2022-05-26 | 2022-06-15 | 117 | 8d | 0d | Ведущий разработчик | 120h | 540,000 |
| 121 | 3.9 | Сформулировать и утвердить функциональные и технические спецификации для объектов, отчетов, интерфейсов | 15d | 2022-06-16 | 2022-07-06 | 120 | 8d | 0d | Ведущий разработчик; Ведущий консультант | 240h | 1,080,000 |
| 122 | 3.10 | Выполнить проверку кода и принять ФС И ТС | 16d | 2022-07-07 | 2022-07-28 | 121 | 41d |  | Старший разработчик | 128h | 448,000 |
| 123 | 3.11 | Сформулировать и утвердить функциональные и технические спецификации для потоков операций | 8d | 2022-05-06 | 2022-05-17 | 51 | 0d |  | Старший консультант; Старший разработчик | 128h | 448,000 |
| 124 | 3.12 | Опубликовать корпоративные сервисы в продуктивной среде | 9d | 2022-05-18 | 2022-05-30 | 123 | 0d |  | Младший консультант; Разработчик Джун | 144h | 288,000 |
| 125 | 3.13 | Разработать и спроектировать комбинированные предложения | 30d | 2022-05-31 | 2022-07-11 | 124 | 0d |  | Ведущий разработчик; Старший разработчик | 480h | 1,920,000 |
| 126 | 3.14 | Протестировать процедуры бизнес-процессов | 10d | 2022-07-12 | 2022-07-25 | 125 | 0d |  | Разработчик Джун | 80h | 160,000 |
| 127 | 3.15 | Составить информацию для обучения пользователей | 10d | 2022-07-12 | 2022-07-25 | 125 | 10d | 0d | Консультант SAP HCM; Разработчик; Эксперт | 240h | 870,000 |
| 128 | 3.16 | Разработать материалы для обучения | 15d | 2022-07-26 | 2022-08-15 | 127 | 10d | 0d | Ведущий консультант; Консультант SAP HCM; Эксперт | 360h | 1,515,000 |
| 129 | 3.17 | Наполнить тестовую среду обучения | 6d | 2022-07-26 | 2022-08-02 | 126 | 0d |  | Разработчик; Разработчик Джун | 96h | 228,000 |
| 130 | 3.18 | Провести юнит-тестирование | 10d | 2022-08-03 | 2022-08-16 | 129 | 3d | 0d | Ведущий разработчик; Старший разработчик | 160h | 640,000 |
| 131 | 3.19 | Составить и утвердить отчет о результатах тестирования настроенных и модифицированных процессов проектной командой перед выходом на тестирование пользователей | 3d | 2022-08-17 | 2022-08-19 | 130 | 3d | 0d | Ведущий консультант; Разработчик | 48h | 174,000 |
| 132 | 3.20 | Осуществить функциональное тестирование | 9d | 2022-08-03 | 2022-08-15 | 129 | 0d |  | Ведущий разработчик; Разработчик | 144h | 522,000 |
| 133 | 3.21 | Сформировать и подписать протоколы функциоанльного тестирования | 5d | 2022-08-16 | 2022-08-22 | 132 | 0d |  | Разработчик Джун; Старший консультант | 80h | 220,000 |
| 134 | 3.22 | Обучить тренеров | 15d | 2022-08-16 | 2022-09-05 | 128 | 10d | 0d | Консультант SAP HCM; Разработчик Джун | 240h | 570,000 |
| 135 | 3.23 | Проверить готовность к обучения | 4d | 2022-09-06 | 2022-09-09 | 134 | 10d |  | Ведущий консультант; Консультант SAP HCM | 64h | 232,000 |
| 136 | 3.24 | Опубликовтаь полные результаты тестирования | 3d | 2022-08-23 | 2022-08-25 | 133 | 0d |  | Тим лид | 24h | 108,000 |
| 137 | 3.25 | Составить полную стратегию контроля бизнес-процессов | 8d | 2022-07-07 | 2022-07-18 | 121 | 49d |  | Ведущий консультант; Тим лид | 128h | 576,000 |
| 138 | 3.26 | Разработать инструменты миграции для загрузки данных | 20d | 2022-07-07 | 2022-08-03 | 121 | 8d | 0d | Разработчик Джун; Ведущий консультант | 320h | 1,040,000 |
| 139 | 3.27 | Провести тестовую миграцию | 1d | 2022-08-04 | 2022-08-04 | 138 | 8d | 0d | Разработчик Джун | 8h | 16,000 |
| 140 | 3.28 | Составить отчет об оценке качества данных | 3d | 2022-08-05 | 2022-08-09 | 139 | 8d | 0d | Эксперт; Ведущий консультант | 48h | 237,000 |
| 141 | 3.29 | Протестировать инструменты миграции | 3d | 2022-08-10 | 2022-08-12 | 140 | 8d | 0d | Старший разработчик | 24h | 84,000 |
| 142 | 3.30 | Сформировать перечень замечаний к средствам миграции | 5d | 2022-08-15 | 2022-08-19 | 141 | 8d | 0d | Старший консультант; Старший разработчик | 80h | 280,000 |
| 143 | 3.31 | Выявить метод и стратегию архивации данных | 5d | 2022-08-22 | 2022-08-26 | 142 | 8d | 0d | Старший консультант; Старший разработчик | 80h | 280,000 |
| 144 | 3.32 | Составить и утвердить план использования и обращения к накопленным данным | 5d | 2022-08-29 | 2022-09-02 | 143 | 8d | 0d | Ведущий консультант; Ведущий разработчик | 80h | 360,000 |
| 145 | 3.33 | Составить и утвердить правила хранения архива данных | 5d | 2022-09-05 | 2022-09-09 | 144 | 8d | 0d | Ведущий консультант; Ведущий разработчик | 80h | 360,000 |
| 146 | 3.34 | Составить и утвердить политику уничтожения архивных данных | 2d | 2022-09-12 | 2022-09-13 | 145 | 8d |  | Ведущий консультант; Ведущий разработчик | 32h | 144,000 |
| 147 | 3.35 | Настроить инфраструктуру системы управления качеством (тестовой системы) | 15d | 2022-08-22 | 2022-09-09 | 131 | 3d | 0d | Руководитель проекта; Младший консультант | 240h | 780,000 |
| 148 | 3.36 | Настроить инфраструктуру системы Р (продуктивной системы) | 7d | 2022-09-12 | 2022-09-20 | 147 | 3d |  | Младший консультант; Руководитель проекта | 112h | 364,000 |
| 149 | 3.37 | Определить критичные процессы, для которых необходимы меры по обеспечению отказоустойчивости | 5d | 2022-08-26 | 2022-09-01 | 136 | 0d |  | Ведущий консультант; Эксперт | 80h | 395,000 |
| 150 | 3.38 | Сформулировать и утвердить концепцию системного администрирования | 7d | 2022-09-02 | 2022-09-12 | 149 | 6d | 0d | Тим лид; Эксперт | 112h | 553,000 |
| 151 | 3.39 | Настроить эксплуатацию решения | 15d | 2022-09-02 | 2022-09-22 | 149 | 0d |  | Ведущий разработчик | 120h | 540,000 |
| 152 | 3.40 | Выявить показатели KPI применимые для оптимизации процесса поддержки и платформы | 3d | 2022-09-13 | 2022-09-15 | 150 | 6d |  | Старший разработчик | 24h | 84,000 |
| 153 | 3.41 | Обновление плана руководством проекта | 1d | 2022-09-23 | 2022-09-23 | 151 | 0d |  | Руководитель проекта | 8h | 36,000 |

| ID | WBS | Task | Duration | Start | Finish | Predecessors | Total slack | Free slack | Resources | Work | Cost |
| --- | --- | --- | --- | --- | --- | --- | --- | --- | --- | --- | --- |
| 154 | 4 | **Заключательная подготовка** | 89d | 2022-09-26 | 2023-01-26 |  | 0d |  |  | 1712h | 6,904,000 |
| 155 | 4.1 | **Запуск фазы** | 6d | 2022-09-26 | 2022-10-03 |  | 51d |  |  | 72h | 324,000 |
| 156 | 4.1.1 | Присвоить ресурсы фазы | 3d | 2022-09-26 | 2022-09-28 | 106 | 85d | 0d | Тим лид | 24h | 108,000 |
| 157 | 4.1.2 | Составить подробный план график фазы | 4d | 2022-09-26 | 2022-09-29 | 106 | 51d | 0d | Ведущий консультант | 32h | 144,000 |
| 158 | 4.1.3 | Провести совещание по запуску фазы | 2d | 2022-09-30 | 2022-10-03 | 157 | 51d | 0d | Руководитель проекта | 16h | 72,000 |
| 159 | 4.2 | Проверить готовность предприятия | 5d | 2022-10-04 | 2022-10-10 | 158 | 75d | 0d | Руководитель проекта | 40h | 180,000 |
| 160 | 4.3 | Презентация результатов изменений | 3d | 2022-10-11 | 2022-10-13 | 159 | 75d |  | Тим лид | 24h | 108,000 |
| 161 | 4.4 | Составить контрольный список обучения | 10d | 2022-09-26 | 2022-10-07 | 106 | 0d |  | Ведущий консультант | 80h | 360,000 |
| 162 | 4.5 | Поставить оценки обучения | 3d | 2022-10-10 | 2022-10-12 | 161 | 0d |  | Младший консультант; Разработчик Джун | 48h | 96,000 |
| 163 | 4.6 | Провести тесты производительности | 15d | 2022-10-13 | 2022-11-02 | 162 | 0d |  | Ведущий разработчик | 120h | 540,000 |
| 164 | 4.7 | Составить вывода и рекомендации о соответвии системы утвержденным критериям производительности | 5d | 2022-11-03 | 2022-11-09 | 163 | 0d |  | Ведущий консультант; Ведущий разработчик | 80h | 360,000 |
| 165 | 4.8 | Провести приемочное тестирование | 15d | 2022-11-10 | 2022-11-30 | 164 | 0d |  | Старший разработчик | 120h | 420,000 |
| 166 | 4.9 | Заполнить и подписать протокол приемочных испытаний, подтверждающий готовность процессов к переводу в продуктивную эксплуатацию | 5d | 2022-12-01 | 2022-12-07 | 165 | 0d |  | Руководитель проекта; Старший консультант; Старший разработчик | 120h | 460,000 |
| 167 | 4.10 | Составить и утвердить план перехода к продуктивной эксплуатации | 15d | 2022-12-08 | 2022-12-28 | 166 | 0d |  | Руководитель проекта | 120h | 540,000 |
| 168 | 4.11 | Архивировать накопленные данные | 5d | 2022-10-04 | 2022-10-10 | 158 | 78d |  | Ведущий разработчик | 40h | 180,000 |
| 169 | 4.12 | Сформулировать и утвердить стратегию поддержки | 5d | 2022-10-04 | 2022-10-10 | 158 | 51d | 0d | Ведущий консультант | 40h | 180,000 |
| 170 | 4.13 | Создать и утвердить проект службы поддержки | 5d | 2022-10-11 | 2022-10-17 | 169 | 51d | 0d | Руководитель проекта; Старший консультант | 80h | 320,000 |
| 171 | 4.14 | Разработать процессы и процедуры поддержки | 10d | 2022-10-18 | 2022-10-31 | 170 | 51d | 0d | Ведущий разработчик; Старший разработчик; Старший консультант | 240h | 920,000 |
| 172 | 4.15 | Составить и утвердить стратегию обеспечения персоналом структуры поддержки | 10d | 2022-11-01 | 2022-11-14 | 171 | 51d | 0d | Ведущий консультант; Младший консультант | 160h | 520,000 |
| 173 | 4.16 | Начать обеспечение поддержки | 2d | 2022-11-15 | 2022-11-16 | 172 | 51d |  | Ведущий консультант; Младший консультант; Разработчик Джун | 48h | 136,000 |
| 174 | 4.17 | Составить и утвредить модель управления эксплуатацией решений | 10d | 2022-12-29 | 2023-01-11 | 167 | 0d |  | Ведущий разработчик; Руководитель проекта | 160h | 720,000 |
| 175 | 4.18 | Создать центр экспертизы/компетенций | 10d | 2023-01-12 | 2023-01-25 | 174 | 0d |  | Тим лид | 80h | 360,000 |
| 176 | 4.19 | Выполнять ежедневные операции продуктивного решения | 1d | 2022-09-29 | 2022-09-29 | 156 | 85d |  | Тим лид | 8h | 36,000 |
| 177 | 4.20 | Составить график и объем обучения информационных компаний | 3d | 2022-10-04 | 2022-10-06 | 158 | 80d |  | Тим лид | 24h | 108,000 |
| 178 | 4.21 | Обновление плана руководством проекта | 1d | 2023-01-26 | 2023-01-26 | 175 | 0d |  | Руководитель проекта | 8h | 36,000 |

| ID | WBS | Task | Duration | Start | Finish | Predecessors | Total slack | Free slack | Resources | Work | Cost |
| --- | --- | --- | --- | --- | --- | --- | --- | --- | --- | --- | --- |
| 179 | 5 | **Поддержка продуктивной экспулуатации** | 41d | 2023-01-27 | 2023-03-24 |  | 0d |  |  | 952h | 29,524,000 |
| 180 | 5.1 | **Запуск фазы** | 4d | 2023-01-27 | 2023-02-01 |  | 0d |  |  | 56h | 252,000 |
| 181 | 5.1.1 | Присвоить ресурсы фазы | 3d | 2023-01-27 | 2023-01-31 | 154 | 38d |  | Тим лид | 24h | 108,000 |
| 182 | 5.1.2 | Составить подробный план график фазы | 3d | 2023-01-27 | 2023-01-31 | 154 | 0d |  | Ведущий консультант | 24h | 108,000 |
| 183 | 5.1.3 | Провести совещание по запуску фазы | 1d | 2023-02-01 | 2023-02-01 | 182 | 0d |  | Руководитель проекта | 8h | 36,000 |
| 184 | 5.2 | Провести семинар по урокам проекта | 20d | 2023-02-02 | 2023-03-01 | 183 | 0d |  | Старший консультант | 160h | 560,000 |
| 185 | 5.3 | Проведение анализа приемки конечными пользователями | 5d | 2023-02-02 | 2023-02-08 | 183 | 22d | 0d | Ведущий консультант; Ведущий разработчик | 80h | 360,000 |
| 186 | 5.4 | **Составить стратегию поддержки знаний** | 20d | 2023-02-09 | 2023-03-08 |  | 12d |  |  | 320h | 940,000 |
| 187 | 5.4.1 | Составить отчёт с поределением трудностей использования SAP | 5d | 2023-02-09 | 2023-02-15 | 185 | 22d | 0d | Старший консультант; Старший разработчик | 80h | 280,000 |
| 188 | 5.4.2 | Выявить проблемы в использовании | 5d | 2023-02-16 | 2023-02-22 | 187 | 22d |  | Консультант SAP HCM; Старший консультант; Старший разработчик | 120h | 390,000 |
| 189 | 5.4.3 | Выявить проблемы в обучении и знаниях | 5d | 2023-03-02 | 2023-03-08 | 184 | 0d |  | Консультант SAP HCM; Младший консультант; Разработчик Джун | 120h | 270,000 |
| 190 | 5.5 | Заркыть проект и перейти к стадии "Управление эксплуатацией решения" | 1d | 2023-03-09 | 2023-03-09 | 189 | 0d |  | Руководитель проекта | 8h | 36,000 |
| 191 | 5.6 | Обеспечить процессы поддержки продуктивной эксплуатации | 10d | 2023-03-10 | 2023-03-23 | 190 | 0d |  | Консультант SAP HCM; Руководитель проекта; Тим лид; Стоимость поддержки от SAP | 320h | 27,340,000 |
| 192 | 5.7 | Обновление плана руководством проекта | 1d | 2023-03-24 | 2023-03-24 | 191 | 0d |  | Руководитель проекта | 8h | 36,000 |
| 193 | 6 | **Эксплуатация** | 14d | 2023-03-27 | 2023-04-13 |  | 0d |  |  |  |  |
| 194 | 6.1 | Контроль управления знаниями | 14d | 2023-03-27 | 2023-04-13 | 179 | 0d |  |  |  |  |
